# Cronograma de Implementacion

How a schedule from MS Project changed from version to version. A marks actual dates.

## Version 1 (saved 2008-12-24)

Note of the change: Se agregaron nuevas actividades solicitadas (palm, rechazos y resumen de preventa)

| ID | WBS | Task | Duration | Start | Finish | Predecessors | Complete | Total float |
| --- | --- | --- | --- | --- | --- | --- | --- | --- |
| 1 | 1 | **DATAWAREHOUSE MENDOCINA-PEDIDOS** | 18.88d | 2008-12-02 08:00 A | 2009-02-07 22:00 |  | 21% | 0d |
| 2 | 1.1 | **Diseño de la Extraccion de Datos** | 3d | 2008-12-02 08:00 A | 2008-12-20 11:00 |  | 80% | 0.53d |
| 3 |  | Configuracion inicial ambiente de desarrollo | 4h | 2008-12-02 08:00 A | 2008-12-05 09:00 A |  | 100% |  |
| 4 |  | Maestro de Artículos | 1h | 2008-12-06 09:00 A | 2008-12-06 10:00 A | 3 | 100% |  |
| 5 |  | Maestro de Distribuidores | 1h | 2008-12-06 10:00 A | 2008-12-06 11:00 A | 4 | 100% |  |
| 6 |  | Maestro de Vendedores | 1h | 2008-12-06 11:00 A | 2008-12-06 12:00 A | 5 | 100% |  |
| 7 |  | Maestro de Sabores | 1h | 2008-12-06 12:00 A | 2008-12-06 13:00 A | 6 | 100% |  |
| 8 |  | Maestro de Líneas | 1h | 2008-12-08 08:00 A | 2008-12-08 09:00 A | 7 | 100% |  |
| 9 |  | Maestro de Distritos | 1h | 2008-12-09 08:00 A | 2008-12-09 09:00 A | 8 | 100% |  |
| 10 |  | Maestro de Rutas | 1h | 2008-12-10 08:00 A | 2008-12-10 09:00 A | 9 | 100% |  |
| 11 |  | Maestro de Sectores | 1h | 2008-12-11 08:00 A | 2008-12-11 09:00 A | 10 | 100% |  |
| 12 |  | Maestro de Clientes | 1h | 2008-12-12 08:00 A | 2008-12-12 09:00 A | 11 | 100% |  |
| 13 |  | Maestro Clientes - Precios | 1h | 2008-12-13 09:00 A | 2008-12-13 10:00 A | 12 | 100% |  |
| 14 |  | Transaccional de Pedidos | 4h | 2008-12-13 10:00 A | 2008-12-15 09:00 A | 13 | 100% |  |
| 15 |  | Validacion de la informacion (congruencia) | 6h | 2008-12-16 08:00 A | 2008-12-20 11:00 | 14 | 20% | 0.53d |
| 16 | 1.2 | **Diseño de la Transformacion de Datos** | 2.75d | 2008-12-20 11:00 A | 2008-12-29 22:00 |  | 58% | 0d |
| 17 |  | Dimension de Fecha | 3h | 2008-12-20 11:00 A | 2008-12-22 21:00 A | 2 | 100% |  |
| 18 |  | Dimension de Clientes | 6h | 2008-12-22 21:00 A | 2008-12-24 21:00 | 17 | 95% | 0.04d |
| 19 |  | Dimension Distrito Ruta Sector | 2h | 2008-12-24 21:00 A | 2008-12-24 23:00 A | 18 | 100% |  |
| 20 |  | Dimension Linea Sabor Articulo | 2h | 2008-12-25 20:00 A | 2008-12-25 22:00 A | 19 | 100% |  |
| 21 |  | Dimension Distribuidor | 1h | 2008-12-25 22:00 | 2008-12-25 23:00 | 20 |  | 0d |
| 22 |  | Dimensiorn Estado de pedido | 1h | 2008-12-26 20:00 | 2008-12-26 21:00 | 21 |  | 0d |
| 23 |  | Dimension Jefe Supervisor Vendedor | 2h | 2008-12-26 21:00 | 2008-12-26 23:00 | 22 |  | 0d |
| 24 |  | Tabla de Hechos: Pedidos | 5h | 2008-12-27 20:00 | 2008-12-29 22:00 | 23 |  | 0d |
| 25 | 1.3 | **Diseño del cargado de datos** | 1.25d | 2008-12-29 22:00 | 2009-01-01 23:00 |  |  | 0d |
| 26 |  | Cubo: PEDIDOS | 5h | 2008-12-29 22:00 | 2008-12-31 21:00 | 16 |  | 0d |
| 27 |  | Medida Cantidad de Pedidos | 1h | 2008-12-31 21:00 | 2008-12-31 22:00 | 26 |  | 0d |
| 28 |  | Medida Cantidad de clientes | 2h | 2008-12-31 22:00 | 2009-01-01 21:00 | 27 |  | 0d |
| 29 |  | Medida Monto de los pedidos | 2h | 2009-01-01 21:00 | 2009-01-01 23:00 | 28 |  | 0d |
| 30 | 1.4 | **Diseño de Informes en excel** | 0.25d | 2009-01-02 20:00 | 2009-01-02 22:00 |  |  | 0d |
| 31 |  | Layout de ejemplo | 2h | 2009-01-02 20:00 | 2009-01-02 22:00 | 29 |  | 0d |
| 32 | 1.5 | **Creacion de reportes adicionales en Reporting Services** | 1.5d | 2009-01-02 22:00 | 2009-01-07 22:00 |  |  | 0d |
| 33 |  | Informe Clientes por fecha | 4h | 2009-01-02 22:00 | 2009-01-03 23:00 | 31 |  | 0d |
| 34 |  | Informe a medida 2 | 4h | 2009-01-05 20:00 | 2009-01-06 21:00 | 33 |  | 0d |
| 35 |  | Informe a medida 3 | 4h | 2009-01-06 21:00 | 2009-01-07 22:00 | 34 |  | 0d |
| 36 |  | Instalacion y configuracion del nuevo servidor | 8h | 2009-01-07 22:00 | 2009-01-10 21:00 | 35 |  | 0d |
| 37 |  | Preparacion de Manual y Presentacion a los usuarios | 12h | 2009-01-10 21:00 | 2009-01-15 21:00 | 36 |  | 0d |
| 38 |  | Presentacion y entrega de las capacidades de la nueva herramienta | 1h | 2009-01-15 21:00 | 2009-01-15 22:00 | 37 |  | 0d |
| 39 |  | Requerimientos / Correcciones adicionales | 24h | 2009-01-15 22:00 | 2009-01-24 22:00 | 38 |  | 0d |
| 40 |  | Capacitacion a usuarios finales para explotacion usando Excel 2007 | 24h | 2009-01-24 22:00 | 2009-02-03 22:00 | 39 |  | 0d |
| 41 |  | Capacitacion a sistemas para mantenimiento de los flujos | 12h | 2009-02-03 22:00 | 2009-02-07 22:00 | 40 |  | 0d |

## Version 2 (saved 2009-07-01)

Note of the change: propuesta de fase 2

Last finish 2009-02-07 → 2009-07-08 (+151d).

Added:

| ID | Task | Duration | Start | Finish | Constraint |
| --- | --- | --- | --- | --- | --- |
| 42 | **DATAWAREHOUSE MENDOCINA - LIQUIDACION** | 1d? | 2009-07-06 | 2009-07-08 |  |
| 43 | Analisis de la necesidad y disponibilidad de informacion | 1d? | 2009-07-06 | 2009-07-08 | start no earlier than 2009-07-06 |
| 44 | **extraccion de datos** | 1d? | 2009-07-06 | 2009-07-08 |  |
| 45 | Extraccion de Camiones | 1d? | 2009-07-06 | 2009-07-08 | start no earlier than 2009-07-06 |
| 46 | Extraccion de Distribuidores | 1d? | 2009-07-06 | 2009-07-08 | start no earlier than 2009-07-06 |
| 47 | Extraccion de Distritos (MDV123) | 1d? | 2009-07-06 | 2009-07-08 | start no earlier than 2009-07-06 |
| 48 | Extraccion de Cabecera de liquidaciones | 1d? | 2009-07-06 | 2009-07-08 | start no earlier than 2009-07-06 |
| 49 | Extraccion de detalle de liquidaciones | 1d? | 2009-07-06 | 2009-07-08 | start no earlier than 2009-07-06 |
| 50 | Extraccion de fletes de distribuidor | 1d? | 2009-07-06 | 2009-07-08 | start no earlier than 2009-07-06 |
| 51 | Extraccion de tipos de documento | 1d? | 2009-07-06 | 2009-07-08 | start no earlier than 2009-07-06 |
| 52 | Extraccion de cabecera de movimientos de bodega | 1d? | 2009-07-06 | 2009-07-08 | start no earlier than 2009-07-06 |
| 53 | Extraccion de detalle de movimientos de bodega | 1d? | 2009-07-06 | 2009-07-08 | start no earlier than 2009-07-06 |
| 54 | Extraccion de dias habiles | 1d? | 2009-07-06 | 2009-07-08 | start no earlier than 2009-07-06 |
| 55 | Extraccion de cabecera de facturaas | 1d? | 2009-07-06 | 2009-07-08 | start no earlier than 2009-07-06 |
| 56 | Extraccion de detalle de facturas | 1d? | 2009-07-06 | 2009-07-08 | start no earlier than 2009-07-06 |
| 57 | **transformacion de datos** | 1d? | 2009-07-06 | 2009-07-08 |  |
| 58 | Dimension de Distribuidores | 1d? | 2009-07-06 | 2009-07-08 | start no earlier than 2009-07-06 |
| 59 | Dimension de Camiones | 1d? | 2009-07-06 | 2009-07-08 | start no earlier than 2009-07-06 |
| 60 | Dimension de tipos de documentos | 1d? | 2009-07-06 | 2009-07-08 | start no earlier than 2009-07-06 |
| 61 | Dimension de Bodegas | 1d? | 2009-07-06 | 2009-07-08 | start no earlier than 2009-07-06 |
| 62 | Dimension Fecha - Dias Habiles (adaptacion) | 1d? | 2009-07-06 | 2009-07-08 | start no earlier than 2009-07-06 |
| 63 | Dimension Distrito - Ruta (Adaptacion) | 1d? | 2009-07-06 | 2009-07-08 | start no earlier than 2009-07-06 |
| 64 | Tabla de hechos de Liquidacion | 1d? | 2009-07-06 | 2009-07-08 | start no earlier than 2009-07-06 |
| 65 | Tabla de Hechos de Facturacion | 1d? | 2009-07-06 | 2009-07-08 | start no earlier than 2009-07-06 |
| 66 | Tabla de hechos de movimientos de bodega | 1d? | 2009-07-06 | 2009-07-08 | start no earlier than 2009-07-06 |
| 67 | Tabla de hechos de fletes de distribuidor | 1d? | 2009-07-06 | 2009-07-08 | start no earlier than 2009-07-06 |
| 68 | **Cargado de Datos** | 1d? | 2009-07-06 | 2009-07-08 |  |
| 69 | Cubo Liquidacion | 1d? | 2009-07-06 | 2009-07-08 | start no earlier than 2009-07-06 |
| 70 | Cubo Movimientos de Bodega | 1d? | 2009-07-06 | 2009-07-08 | start no earlier than 2009-07-06 |
| 71 | Cubo Fletes de distribuidor | 1d? | 2009-07-06 | 2009-07-08 | start no earlier than 2009-07-06 |
| 72 | Cubo de Facturacion | 1d? | 2009-07-06 | 2009-07-08 | start no earlier than 2009-07-06 |
| 73 | Preparacion de manual | 1d? | 2009-07-06 | 2009-07-08 | start no earlier than 2009-07-06 |
| 74 | Presentacion a los usuarios | 1d? | 2009-07-06 | 2009-07-08 | start no earlier than 2009-07-06 |
| 75 | Requerimientos - Correcciones adicionales | 1d? | 2009-07-06 | 2009-07-08 | start no earlier than 2009-07-06 |
| 76 | Capacitacion a usuarios finales | 1d? | 2009-07-06 | 2009-07-08 | start no earlier than 2009-07-06 |
| 77 | Capacitacion a Sistemas para mantenimiento | 1d? | 2009-07-06 | 2009-07-08 | start no earlier than 2009-07-06 |

Changed:

| ID | Task | Start | Finish | Total float | Other |
| --- | --- | --- | --- | --- | --- |
| 1 | **DATAWAREHOUSE MENDOCINA-PEDIDOS** | 2008-12-02 08:00 A → 2008-12-02 A | 2009-02-07 22:00 → 2009-02-07 | 0d → 48.38d |  |
| 2 | **Diseño de la Extraccion de Datos** | 2008-12-02 08:00 A → 2008-12-02 A | 2008-12-20 11:00 → 2008-12-20 | 0.53d → 64.25d | baseline start 2008-12-02 08:00 → 2008-12-02; baseline finish 2008-12-20 11:00 → 2008-12-20 |
| 3 | Configuracion inicial ambiente de desarrollo | 2008-12-02 08:00 A → 2008-12-02 A | 2008-12-05 09:00 A → 2008-12-05 A |  | baseline start 2008-12-02 08:00 → 2008-12-02; baseline finish 2008-12-05 09:00 → 2008-12-05 |
| 4 | Maestro de Artículos | 2008-12-06 09:00 A → 2008-12-06 A | 2008-12-06 10:00 A → 2008-12-06 A |  | baseline start 2008-12-06 09:00 → 2008-12-06; baseline finish 2008-12-06 10:00 → 2008-12-06 |
| 5 | Maestro de Distribuidores | 2008-12-06 10:00 A → 2008-12-06 A | 2008-12-06 11:00 A → 2008-12-06 A |  | baseline start 2008-12-06 10:00 → 2008-12-06; baseline finish 2008-12-06 11:00 → 2008-12-06 |
| 6 | Maestro de Vendedores | 2008-12-06 11:00 A → 2008-12-06 A | 2008-12-06 12:00 A → 2008-12-06 A |  | baseline start 2008-12-06 11:00 → 2008-12-06; baseline finish 2008-12-06 12:00 → 2008-12-06 |
| 7 | Maestro de Sabores | 2008-12-06 12:00 A → 2008-12-06 A | 2008-12-06 13:00 A → 2008-12-06 A |  | baseline start 2008-12-06 12:00 → 2008-12-06; baseline finish 2008-12-06 13:00 → 2008-12-06 |
| 8 | Maestro de Líneas | 2008-12-08 08:00 A → 2008-12-08 A | 2008-12-08 09:00 A → 2008-12-08 A |  | baseline start 2008-12-08 08:00 → 2008-12-08; baseline finish 2008-12-08 09:00 → 2008-12-08 |
| 9 | Maestro de Distritos | 2008-12-09 08:00 A → 2008-12-09 A | 2008-12-09 09:00 A → 2008-12-09 A |  | baseline start 2008-12-09 08:00 → 2008-12-09; baseline finish 2008-12-09 09:00 → 2008-12-09 |
| 10 | Maestro de Rutas | 2008-12-10 08:00 A → 2008-12-10 A | 2008-12-10 09:00 A → 2008-12-10 A |  | baseline start 2008-12-10 08:00 → 2008-12-10; baseline finish 2008-12-10 09:00 → 2008-12-10 |
| 11 | Maestro de Sectores | 2008-12-11 08:00 A → 2008-12-11 A | 2008-12-11 09:00 A → 2008-12-11 A |  | baseline start 2008-12-11 08:00 → 2008-12-11; baseline finish 2008-12-11 09:00 → 2008-12-11 |
| 12 | Maestro de Clientes | 2008-12-12 08:00 A → 2008-12-12 A | 2008-12-12 09:00 A → 2008-12-12 A |  | baseline start 2008-12-12 08:00 → 2008-12-12; baseline finish 2008-12-12 09:00 → 2008-12-12 |
| 13 | Maestro Clientes - Precios | 2008-12-13 09:00 A → 2008-12-13 A | 2008-12-13 10:00 A → 2008-12-13 A |  | baseline start 2008-12-13 09:00 → 2008-12-13; baseline finish 2008-12-13 10:00 → 2008-12-13 |
| 14 | Transaccional de Pedidos | 2008-12-13 10:00 A → 2008-12-13 A | 2008-12-15 09:00 A → 2008-12-15 A |  | baseline start 2008-12-13 10:00 → 2008-12-13; baseline finish 2008-12-15 09:00 → 2008-12-15 |
| 15 | Validacion de la informacion (congruencia) | 2008-12-16 08:00 A → 2008-12-16 A | 2008-12-20 11:00 → 2008-12-20 | 0.53d → 64.25d | baseline start 2008-12-16 08:00 → 2008-12-16; baseline finish 2008-12-20 11:00 → 2008-12-20 |
| 16 | **Diseño de la Transformacion de Datos** | 2008-12-20 11:00 A → 2008-12-20 A | 2008-12-29 22:00 → 2008-12-29 | 0d → 48.38d | baseline start 2008-12-20 11:00 → 2008-12-20; baseline finish 2008-12-29 22:00 → 2008-12-29 |
| 17 | Dimension de Fecha | 2008-12-20 11:00 A → 2008-12-20 A | 2008-12-22 21:00 A → 2008-12-22 A |  | baseline start 2008-12-20 11:00 → 2008-12-20; baseline finish 2008-12-22 21:00 → 2008-12-22 |
| 18 | Dimension de Clientes | 2008-12-22 21:00 A → 2008-12-22 A | 2008-12-24 21:00 → 2008-12-24 | 0.04d → 50d | baseline start 2008-12-22 21:00 → 2008-12-22; baseline finish 2008-12-24 21:00 → 2008-12-24 |
| 19 | Dimension Distrito Ruta Sector | 2008-12-24 21:00 A → 2008-12-24 A | 2008-12-24 23:00 A → 2008-12-24 A |  | baseline start 2008-12-24 21:00 → 2008-12-24; baseline finish 2008-12-24 23:00 → 2008-12-24 |
| 20 | Dimension Linea Sabor Articulo | 2008-12-25 20:00 A → 2008-12-25 A | 2008-12-25 22:00 A → 2008-12-25 A |  | baseline start 2008-12-25 20:00 → 2008-12-25; baseline finish 2008-12-25 22:00 → 2008-12-25 |
| 21 | Dimension Distribuidor | 2008-12-25 22:00 → 2008-12-25 | 2008-12-25 23:00 → 2008-12-25 | 0d → 48.38d | baseline start 2008-12-25 22:00 → 2008-12-25; baseline finish 2008-12-25 23:00 → 2008-12-25 |
| 22 | Dimensiorn Estado de pedido | 2008-12-26 20:00 → 2008-12-26 | 2008-12-26 21:00 → 2008-12-26 | 0d → 48.38d | baseline start 2008-12-26 20:00 → 2008-12-26; baseline finish 2008-12-26 21:00 → 2008-12-26 |
| 23 | Dimension Jefe Supervisor Vendedor | 2008-12-26 21:00 → 2008-12-26 | 2008-12-26 23:00 → 2008-12-26 | 0d → 48.38d | baseline start 2008-12-26 21:00 → 2008-12-26; baseline finish 2008-12-26 23:00 → 2008-12-26 |
| 24 | Tabla de Hechos: Pedidos | 2008-12-27 20:00 → 2008-12-27 | 2008-12-29 22:00 → 2008-12-29 | 0d → 48.38d | baseline start 2008-12-27 20:00 → 2008-12-27; baseline finish 2008-12-29 22:00 → 2008-12-29 |
| 25 | **Diseño del cargado de datos** | 2008-12-29 22:00 → 2008-12-29 | 2009-01-01 23:00 → 2009-01-01 | 0d → 48.38d | baseline start 2008-12-29 22:00 → 2008-12-29; baseline finish 2009-01-01 23:00 → 2009-01-01 |
| 26 | Cubo: PEDIDOS | 2008-12-29 22:00 → 2008-12-29 | 2008-12-31 21:00 → 2008-12-31 | 0d → 48.38d | baseline start 2008-12-29 22:00 → 2008-12-29; baseline finish 2008-12-31 21:00 → 2008-12-31 |
| 27 | Medida Cantidad de Pedidos | 2008-12-31 21:00 → 2008-12-31 | 2008-12-31 22:00 → 2008-12-31 | 0d → 48.38d | baseline start 2008-12-31 21:00 → 2008-12-31; baseline finish 2008-12-31 22:00 → 2008-12-31 |
| 28 | Medida Cantidad de clientes | 2008-12-31 22:00 → 2008-12-31 | 2009-01-01 21:00 → 2009-01-01 | 0d → 48.38d | baseline start 2008-12-31 22:00 → 2008-12-31; baseline finish 2009-01-01 21:00 → 2009-01-01 |
| 29 | Medida Monto de los pedidos | 2009-01-01 21:00 → 2009-01-01 | 2009-01-01 23:00 → 2009-01-01 | 0d → 48.38d | baseline start 2009-01-01 21:00 → 2009-01-01; baseline finish 2009-01-01 23:00 → 2009-01-01 |
| 30 | **Diseño de Informes en excel** | 2009-01-02 20:00 → 2009-01-02 | 2009-01-02 22:00 → 2009-01-02 | 0d → 48.38d | baseline start 2009-01-02 20:00 → 2009-01-02; baseline finish 2009-01-02 22:00 → 2009-01-02 |
| 31 | Layout de ejemplo | 2009-01-02 20:00 → 2009-01-02 | 2009-01-02 22:00 → 2009-01-02 | 0d → 48.38d | baseline start 2009-01-02 20:00 → 2009-01-02; baseline finish 2009-01-02 22:00 → 2009-01-02 |
| 32 | **Creacion de reportes adicionales en Reporting Services** | 2009-01-02 22:00 → 2009-01-02 | 2009-01-07 22:00 → 2009-01-07 | 0d → 48.38d | baseline start 2009-01-02 22:00 → 2009-01-02; baseline finish 2009-01-07 22:00 → 2009-01-07 |
| 33 | Informe Clientes por fecha | 2009-01-02 22:00 → 2009-01-02 | 2009-01-03 23:00 → 2009-01-03 | 0d → 48.38d | baseline start 2009-01-02 22:00 → 2009-01-02; baseline finish 2009-01-03 23:00 → 2009-01-03 |
| 34 | Informe a medida 2 | 2009-01-05 20:00 → 2009-01-05 | 2009-01-06 21:00 → 2009-01-06 | 0d → 48.38d | baseline start 2009-01-05 20:00 → 2009-01-05; baseline finish 2009-01-06 21:00 → 2009-01-06 |
| 35 | Informe a medida 3 | 2009-01-06 21:00 → 2009-01-06 | 2009-01-07 22:00 → 2009-01-07 | 0d → 48.38d | baseline start 2009-01-06 21:00 → 2009-01-06; baseline finish 2009-01-07 22:00 → 2009-01-07 |
| 36 | Instalacion y configuracion del nuevo servidor | 2009-01-07 22:00 → 2009-01-07 | 2009-01-10 21:00 → 2009-01-10 | 0d → 48.38d | baseline start 2009-01-07 22:00 → 2009-01-07; baseline finish 2009-01-10 21:00 → 2009-01-10 |
| 37 | Preparacion de Manual y Presentacion a los usuarios | 2009-01-10 21:00 → 2009-01-10 | 2009-01-15 21:00 → 2009-01-15 | 0d → 48.38d | baseline start 2009-01-10 21:00 → 2009-01-10; baseline finish 2009-01-15 21:00 → 2009-01-15 |
| 38 | Presentacion y entrega de las capacidades de la nueva herramienta | 2009-01-15 21:00 → 2009-01-15 | 2009-01-15 22:00 → 2009-01-15 | 0d → 48.38d | baseline start 2009-01-15 21:00 → 2009-01-15; baseline finish 2009-01-15 22:00 → 2009-01-15 |
| 39 | Requerimientos / Correcciones adicionales | 2009-01-15 22:00 → 2009-01-15 | 2009-01-24 22:00 → 2009-01-24 | 0d → 48.38d | baseline start 2009-01-15 22:00 → 2009-01-15; baseline finish 2009-01-24 22:00 → 2009-01-24 |
| 40 | Capacitacion a usuarios finales para explotacion usando Excel 2007 | 2009-01-24 22:00 → 2009-01-24 | 2009-02-03 22:00 → 2009-02-03 | 0d → 48.38d | baseline start 2009-01-24 22:00 → 2009-01-24; baseline finish 2009-02-03 22:00 → 2009-02-03 |
| 41 | Capacitacion a sistemas para mantenimiento de los flujos | 2009-02-03 22:00 → 2009-02-03 | 2009-02-07 22:00 → 2009-02-07 | 0d → 48.38d | baseline start 2009-02-03 22:00 → 2009-02-03; baseline finish 2009-02-07 22:00 → 2009-02-07 |
