# Cronograma de Implementacion

How a schedule from MS Project changed from version to version. A marks actual dates.

## Version 1 (saved 2009-01-04)

Note of the change: documents

| ID | WBS | Task | Duration | Start | Finish | Predecessors | Complete | Total float |
| --- | --- | --- | --- | --- | --- | --- | --- | --- |
| 1 | 1 | **DATAWAREHOUSE MENDOCINA-PEDIDOS** | 11.88d | 2008-12-02 08:00 A | 2009-01-16 23:00 |  | 64% | 0d |
| 2 | 1.1 | **Diseño de la Extraccion de Datos** | 3d | 2008-12-02 08:00 A | 2008-12-20 11:00 |  | 98% | 8.88d |
| 3 |  | Configuracion inicial ambiente de desarrollo | 4h | 2008-12-02 08:00 A | 2008-12-05 09:00 A |  | 100% |  |
| 4 |  | Maestro de Artículos | 1h | 2008-12-06 09:00 A | 2008-12-06 10:00 A | 3 | 100% |  |
| 5 |  | Maestro de Distribuidores | 1h | 2008-12-06 10:00 A | 2008-12-06 11:00 A | 4 | 100% |  |
| 6 |  | Maestro de Vendedores | 1h | 2008-12-06 11:00 A | 2008-12-06 12:00 A | 5 | 100% |  |
| 7 |  | Maestro de Sabores | 1h | 2008-12-06 12:00 A | 2008-12-06 13:00 A | 6 | 100% |  |
| 8 |  | Maestro de Líneas | 1h | 2008-12-08 08:00 A | 2008-12-08 09:00 A | 7 | 100% |  |
| 9 |  | Maestro de Distritos | 1h | 2008-12-09 08:00 A | 2008-12-09 09:00 A | 8 | 100% |  |
| 10 |  | Maestro de Rutas | 1h | 2008-12-10 08:00 A | 2008-12-10 09:00 A | 9 | 100% |  |
| 11 |  | Maestro de Sectores | 1h | 2008-12-11 08:00 A | 2008-12-11 09:00 A | 10 | 100% |  |
| 12 |  | Maestro de Clientes | 1h | 2008-12-12 08:00 A | 2008-12-12 09:00 A | 11 | 100% |  |
| 13 |  | Maestro Clientes - Precios | 1h | 2008-12-13 09:00 A | 2008-12-13 10:00 A | 12 | 100% |  |
| 14 |  | Transaccional de Pedidos | 4h | 2008-12-13 10:00 A | 2008-12-15 09:00 A | 13 | 100% |  |
| 15 |  | Validacion de la informacion (congruencia) | 6h | 2008-12-16 08:00 A | 2008-12-20 11:00 | 14 | 90% | 8.88d |
| 16 | 1.2 | **Diseño de la Transformacion de Datos** | 2.75d | 2008-12-20 11:00 A | 2008-12-29 22:00 |  | 98% | 6.12d |
| 17 |  | Dimension de Fecha | 3h | 2008-12-20 11:00 A | 2008-12-22 21:00 A | 2 | 100% |  |
| 18 |  | Dimension de Clientes | 6h | 2008-12-22 21:00 A | 2008-12-24 21:00 A | 17 | 100% |  |
| 19 |  | Dimension Distrito Ruta Sector | 2h | 2008-12-24 21:00 A | 2008-12-24 23:00 A | 18 | 100% |  |
| 20 |  | Dimension Linea Sabor Articulo | 2h | 2008-12-25 20:00 A | 2008-12-25 22:00 A | 19 | 100% |  |
| 21 |  | Dimension Distribuidor | 1h | 2008-12-25 22:00 A | 2008-12-25 23:00 A | 20 | 100% |  |
| 22 |  | Dimensiorn Estado de pedido | 1h | 2008-12-26 20:00 A | 2008-12-26 21:00 A | 21 | 100% |  |
| 23 |  | Dimension Jefe Supervisor Vendedor | 2h | 2008-12-26 21:00 A | 2008-12-26 23:00 | 22 | 80% | 5.62d |
| 24 |  | Tabla de Hechos: Pedidos | 5h | 2008-12-27 20:00 A | 2008-12-29 22:00 A | 23 | 100% |  |
| 25 | 1.3 | **Diseño del cargado de datos** | 1d | 2008-12-29 22:00 A | 2009-01-01 21:00 A |  | 100% |  |
| 26 |  | Cubo: PEDIDOS | 5h | 2008-12-29 22:00 A | 2008-12-31 21:00 A | 16 | 100% |  |
| 27 |  | Medida Cantidad de Pedidos | 1h | 2008-12-31 21:00 A | 2008-12-31 22:00 A | 26 | 100% |  |
| 28 |  | Medida Cantidad de clientes | 1h | 2008-12-31 22:00 A | 2008-12-31 23:00 A | 27 | 100% |  |
| 29 |  | Medida Monto de los pedidos | 1h | 2009-01-01 20:00 A | 2009-01-01 21:00 A | 28 | 100% |  |
| 30 | 1.4 | **Diseño de Informes en excel** | 0.25d | 2009-01-01 21:00 A | 2009-01-01 23:00 A |  | 100% |  |
| 31 |  | Layout de ejemplo | 2h | 2009-01-01 21:00 A | 2009-01-01 23:00 A | 29 | 100% |  |
| 32 | 1.5 | **Creacion de reportes adicionales en Reporting Services** | 0.75d | 2009-01-02 20:00 | 2009-01-03 23:00 |  |  | 0.7d |
| 33 |  | Informe Clientes por fecha | 2h | 2009-01-02 20:00 | 2009-01-02 22:00 | 31 |  | 0.7d |
| 34 |  | Informe a medida 2 | 2h | 2009-01-02 22:00 | 2009-01-03 21:00 | 33 |  | 0.7d |
| 35 |  | Informe a medida 3 | 2h | 2009-01-03 21:00 | 2009-01-03 23:00 | 34 |  | 0.7d |
| 36 |  | Instalacion y configuracion del nuevo servidor | 8h | 2009-01-05 20:00 A | 2009-01-07 22:00 | 35 | 70% | 0d |
| 37 |  | Preparacion de Manual y Presentacion a los usuarios | 10h | 2009-01-07 22:00 | 2009-01-10 23:00 | 36 |  | 0d |
| 38 |  | Presentacion y entrega de las capacidades de la nueva herramienta | 1h | 2009-01-12 20:00 | 2009-01-12 21:00 | 37 |  | 0d |
| 39 |  | Capacitacion a usuarios finales para explotacion usando Excel 2007 | 6h | 2009-01-12 21:00 | 2009-01-14 21:00 | 38 |  | 0d |
| 40 |  | Capacitacion a sistemas para mantenimiento de los flujos | 8h | 2009-01-14 21:00 | 2009-01-16 23:00 | 39 |  | 0d |

## Version 2 (saved 2009-01-12)

Last finish stays 2009-01-16. Complete tasks 24 → 26.

Added:

| ID | Task | Duration | Start | Finish | Predecessors | Resources |
| --- | --- | --- | --- | --- | --- | --- |
| 15 | Transaccional de Visitas Palm | 1h | 2008-12-16 08:00 | 2008-12-16 09:00 | 14 | Sergio Moreno |
| 16 | Transaccional de Resumen de Preventa | 1h | 2008-12-17 08:00 | 2008-12-17 09:00 | 15 | Sergio Moreno |
| 17 | Transaccional de rechazos de pedidos | 1h | 2008-12-18 08:00 | 2008-12-18 09:00 | 16 | Sergio Moreno |
| 18 | Maestro de hojas de ruta | 1h | 2008-12-19 08:00 | 2008-12-19 09:00 | 17 | Sergio Moreno |
| 19 | Maestro de empleados | 1h | 2008-12-20 09:00 | 2008-12-20 10:00 | 18 | Sergio Moreno |
| 30 | Tabla de Hechos: Hojas de Ruta | 2h | 2008-12-02 08:00 A | 2008-12-03 09:00 A | 18 | Sergio Moreno |
| 31 | Tabla de Hechos: Resumen de Preventa | 2h | 2008-12-02 08:00 A | 2008-12-03 09:00 A | 16 |  |
| 32 | Tabla de Hechos: Visitas Palm | 2h | 2008-12-02 08:00 A | 2008-12-03 09:00 A | 15 |  |
| 33 | Tabla de Hechos: Rechazos de Pedidos | 2h | 2008-12-19 08:00 | 2008-12-20 10:00 | 17 |  |
| 36 | Cubo Hojas de Ruta | 1d? | 2008-12-02 08:00 A | 2008-12-06 13:00 A |  |  |
| 37 | Cubo de Resumen de Preventa | 0.38d | 2008-12-02 08:00 A | 2008-12-05 08:02 A |  |  |
| 38 | Cubo de Visitas Palm | 0.38d | 2008-12-02 08:00 A | 2008-12-05 08:02 |  |  |
| 39 | Cubo de Rechazo de pedidos | 0.38d | 2008-12-02 08:00 A | 2008-12-05 08:02 |  |  |

Removed: 27 Medida Cantidad de Pedidos; 28 Medida Cantidad de clientes; 29 Medida Monto de los pedidos

Changed:

| ID | Task | Start | Finish | Duration | Complete | Total float | Predecessors | Other |
| --- | --- | --- | --- | --- | --- | --- | --- | --- |
| 1 | **DATAWAREHOUSE MENDOCINA-PEDIDOS** |  |  | 11.88d → 11.88d? | 64% → 62% |  |  |  |
| 2 | **Diseño de la Extraccion de Datos** |  | 2008-12-20 11:00 → 2008-12-20 10:00 | 3d → 2.88d | 98% → 79% | 8.88d → 9d |  |  |
| 20 | Maestro de Motivos de Rechazo |  | 2008-12-20 11:00 → 2008-12-16 09:00 A (-4d) | 6h → 1h | 90% → 100% | 8.88d → none | 14 → 19 | was named Validacion de la informacion (congruencia) |
| 21 | **Diseño de la Transformacion de Datos** | 2008-12-20 11:00 A → 2008-12-02 08:00 A (-18d) |  | 2.75d → 5.75d | 98% → 92% |  | none → 20 |  |
| 27 | Dimension Estado de pedido |  |  |  |  |  |  | was named Dimensiorn Estado de pedido |
| 34 | **Diseño del cargado de datos** | 2008-12-29 22:00 A → 2008-12-02 08:00 A (-27d) | 2009-01-01 21:00 A → 2009-01-01 21:00 | 1d → 6.75d? | 100% → 89% | none → 5.12d |  |  |
| 35 | Cubo: PEDIDOS | 2008-12-29 22:00 A → 2008-12-31 21:00 A (+2d) | 2008-12-31 21:00 A → 2009-01-01 21:00 A (+1d) | 5h → 3h |  |  | 21 → 29 |  |
| 40 | **Diseño de Informes en excel** |  | 2009-01-01 23:00 A → 2009-01-01 23:00 |  | 100% → 80% | none → 0.7d |  |  |
| 41 | Layout de ejemplo |  | 2009-01-01 23:00 A → 2009-01-01 23:00 |  | 100% → 80% | none → 0.7d | Medida Monto de los pedidos → none |  |

## Version 3 (saved 2009-01-13)

Note of the change: Se agregaron nuevas actividades solicitadas (palm, rechazos y resumen de preventa)

Last finish 2009-01-16 → 2009-01-31 (+15d). Complete tasks 26 → 33.

Added:

| ID | Task | Duration | Start | Finish | Predecessors | Constraint |
| --- | --- | --- | --- | --- | --- | --- |
| 42 | Layout de ejemplo de Cubo Hojas de Ruta | 1.5h | 2009-01-04 09:00 A | 2009-01-05 21:30 A | 35 |  |
| 43 | Layout de ejemplo de Cubo de Resumen de Preventa | 1.5h | 2009-01-14 20:00 | 2009-01-14 21:30 | 36 | start no earlier than 2009-01-14 09:00 |
| 44 | Layout de ejemplo de Cubo de Visitas Palm | 1.5h | 2009-01-13 20:00 | 2009-01-13 21:30 | 37 | start no earlier than 2009-01-13 09:00 |
| 45 | Layout de ejemplo de Cubo de Pedidos con la adicion de Rechazo de pedidos | 1.5h | 2009-01-20 20:00 | 2009-01-20 21:30 | 38 | start no earlier than 2009-01-20 09:00 |
| 49 | Presentacion y entrega de las capacidades de la nueva herramienta con correcciones y con cubo de pedido con la adicion de rechazos | 2h | 2009-01-24 20:00 | 2009-01-24 22:00 | 48 | start no earlier than 2009-01-24 09:00 |
| 50 | Elaboracion de la presentacion para la capacitacion en el uso del excel 2007 | 6h | 2009-01-19 20:00 | 2009-01-20 23:00 |  | start no earlier than 2009-01-19 09:00 |
| 51 | Elaboracion de la power point para la presentacion final de la herramienta en base al manual | 6h | 2009-01-26 20:00 | 2009-01-27 23:00 |  | start no earlier than 2009-01-26 09:00 |
| 52 | Capacitacion a usuarios finales para explotacion usando Excel 2007a | 3h | 2009-01-30 20:00 | 2009-01-30 23:00 |  | start no earlier than 2009-01-30 09:00 |

Removed: 42 Creacion de reportes adicionales en Reporting Services; 43 Informe Clientes por fecha; 44 Informe a medida 2; 45 Informe a medida 3; 49 Capacitacion a usuarios finales para explotacion usando Excel 2007

Changed:

| ID | Task | Start | Finish | Duration | Complete | Total float | Predecessors | Other |
| --- | --- | --- | --- | --- | --- | --- | --- | --- |
| 1 | **DATAWAREHOUSE MENDOCINA-PEDIDOS** |  | 2009-01-16 23:00 → 2009-01-31 23:00 (+15d) | 11.88d? → 16.75d |  |  |  |  |
| 2 | **Diseño de la Extraccion de Datos** |  | 2008-12-20 10:00 → 2009-01-10 21:00 (+21d) | 2.88d → 9.75d | 79% → 98% | 9d → 6.57d |  |  |
| 15 | Transaccional de Visitas Palm | 2008-12-16 08:00 A | 2008-12-16 09:00 A |  | 0% → 100% | 9d → none |  |  |
| 16 | Transaccional de Resumen de Preventa | 2008-12-17 08:00 A | 2008-12-17 09:00 A |  | 0% → 100% | 9d → none |  |  |
| 17 | Transaccional de rechazos de pedidos | 2008-12-18 08:00 A |  |  | 0% → 50% | 9d → 13.69d |  |  |
| 18 | Maestro de hojas de ruta | 2008-12-19 08:00 A | 2008-12-19 09:00 A |  | 0% → 100% | 9d → none |  |  |
| 19 | Maestro de empleados | 2008-12-20 09:00 → 2009-01-10 20:00 A (+21d) | 2008-12-20 10:00 → 2009-01-10 21:00 A (+21d) |  | 0% → 100% | 9d → none |  | constraint none → start no earlier than 2009-01-10 09:00 |
| 20 | Maestro de Motivos de Rechazo | 2008-12-16 08:00 A → 2009-01-10 09:00 A (+25d) | 2008-12-16 09:00 A → 2009-01-10 21:00 A (+25d) |  |  |  |  |  |
| 21 | **Diseño de la Transformacion de Datos** | 2008-12-02 08:00 A → 2008-12-20 11:00 A (+18d) | 2008-12-29 22:00 → 2009-01-17 22:00 (+19d) | 5.75d → 9.12d |  | 6.12d → 4.62d |  |  |
| 22 | Dimension de Fecha |  |  |  |  |  | 2 → none |  |
| 28 | Dimension Jefe Supervisor Vendedor |  | 2008-12-26 23:00 → 2009-01-10 21:24 (+15d) |  |  | 6.75d → 6.95d |  |  |
| 30 | Tabla de Hechos: Hojas de Ruta | 2008-12-02 08:00 A → 2008-12-29 09:00 A (+27d) | 2008-12-03 09:00 A → 2008-12-29 22:00 A (+26d) |  |  |  |  |  |
| 31 | Tabla de Hechos: Resumen de Preventa | 2008-12-02 08:00 A → 2009-01-03 09:00 A (+32d) | 2008-12-03 09:00 A → 2009-01-03 22:00 A (+31d) |  |  |  |  |  |
| 32 | Tabla de Hechos: Visitas Palm | 2008-12-02 08:00 A → 2009-01-05 09:00 A (+34d) | 2008-12-03 09:00 A → 2009-01-05 22:00 A (+33d) |  |  |  |  |  |
| 33 | Tabla de Hechos: Rechazos de Pedidos | 2008-12-19 08:00 → 2009-01-17 20:00 (+29d) | 2008-12-20 10:00 → 2009-01-17 22:00 (+28d) |  |  | 9d → 4.68d |  | constraint none → start no earlier than 2009-01-17 09:00 |
| 34 | **Diseño del cargado de datos** | 2008-12-02 08:00 A → 2008-12-30 09:00 A (+28d) | 2009-01-01 21:00 → 2009-01-19 23:00 (+18d) | 6.75d? → 6.75d |  | 5.12d → 4.12d |  |  |
| 36 | Cubo Hojas de Ruta | 2008-12-02 08:00 A → 2008-12-30 09:00 A (+28d) | 2008-12-06 13:00 A → 2008-12-30 22:00 A (+24d) | 1d? → 2h |  |  | none → 30 |  |
| 37 | Cubo de Resumen de Preventa | 2008-12-02 08:00 A → 2009-01-09 09:00 A (+38d) | 2008-12-05 08:02 A → 2009-01-09 22:00 A (+35d) | 0.38d → 2h |  |  | none → 31 |  |
| 38 | Cubo de Visitas Palm | 2008-12-02 08:00 A → 2009-01-12 09:00 A (+41d) | 2008-12-05 08:02 → 2009-01-12 23:00 A (+38d) | 0.38d → 3h | 80% → 100% | 11.49d → none | none → 32 |  |
| 39 | Cubo de Pedidos con la adicion del Rechazo de pedidos | 2008-12-02 08:00 A → 2009-01-18 09:00 A (+47d) | 2008-12-05 08:02 → 2009-01-19 23:00 (+45d) | 0.38d → 3h | 50% → 51% | 11.49d → 4.12d | none → 33 | was named Cubo de Rechazo de pedidos |
| 40 | **Diseño de Informes en excel** | 2009-01-01 21:00 A → 2009-01-02 09:00 A (+1d) | 2009-01-01 23:00 → 2009-01-20 21:30 (+19d) | 0.25d → 5.81d | 80% → 40% | 0.7d → 3.94d |  |  |
| 41 | Layout de ejemplo del Cubo: PEDIDOS | 2009-01-01 21:00 A → 2009-01-02 09:00 A (+1d) | 2009-01-01 23:00 → 2009-01-02 21:30 A (+1d) | 2h → 1.5h | 80% → 100% | 0.7d → none | none → 35 | was named Layout de ejemplo |
| 46 | Instalacion y configuracion del nuevo servidor |  |  |  |  | 0d → 8d | Informe a medida 3 → none |  |
| 47 | Elaboracion de Manual y Presentacion a los usuarios | 2009-01-07 22:00 → 2009-01-12 09:00 A (+5d) | 2009-01-10 23:00 → 2009-01-16 23:00 (+6d) | 10h → 15h | 0% → 20% | 0d → 4.88d | 46 → none | was named Preparacion de Manual y Presentacion a los usuarios; constraint none → finish no earlier than 2009-01-16 19:00 |
| 48 | Presentacion y entrega de las capacidades de la nueva herramienta sin cubo pedido con la adicion de rechazo | 2009-01-12 20:00 → 2009-01-17 20:00 (+5d) | 2009-01-12 21:00 → 2009-01-17 22:00 (+5d) | 1h → 2h |  | 0d → 4.38d | 47 → none | was named Presentacion y entrega de las capacidades de la nueva herramienta; constraint none → start no earlier than 2009-01-17 09:00 |
| 53 | Capacitacion a sistemas para mantenimiento de los flujos | 2009-01-14 21:00 → 2009-01-31 20:00 (+17d) | 2009-01-16 23:00 → 2009-01-31 23:00 (+15d) | 8h → 3h |  |  | Capacitacion a usuarios finales para explotacion usando Excel 2007 → none | constraint none → start no earlier than 2009-01-31 09:00 |

## Version 4 (saved 2009-01-14)

Note of the change: Elaboracion de INFORME EJECUTIVO al 10 de enero del 2009

Last finish stays 2009-01-31. Complete tasks 33 → 34.

Added:

| ID | Task | Duration | Start | Finish | Constraint |
| --- | --- | --- | --- | --- | --- |
| 49 | Elaboracion de Manual y Presentacion a los usuarios con adicion de rechazo | 3h | 2009-01-20 20:00 | 2009-01-20 23:00 | start no earlier than 2009-01-20 09:00 |

Changed:

| ID | Task | Start | Finish | Duration | Complete | Total float | Predecessors | Other |
| --- | --- | --- | --- | --- | --- | --- | --- | --- |
| 1 | **DATAWAREHOUSE MENDOCINA-PEDIDOS** |  |  |  | 62% → 61% | 0d → 0.05d |  |  |
| 2 | **Diseño de la Extraccion de Datos** |  | 2009-01-10 21:00 → 2009-01-17 21:00 (+7d) | 9.75d → 12d |  | 6.57d → 4.55d |  |  |
| 17 | Transaccional de rechazos de pedidos | 2008-12-18 08:00 A → 2009-01-17 09:00 A (+30d) | 2008-12-18 09:00 → 2009-01-17 21:00 (+30d) |  |  | 13.69d → 4.55d |  |  |
| 21 | **Diseño de la Transformacion de Datos** |  | 2009-01-17 22:00 → 2009-01-17 23:00 | 9.12d → 9.25d | 92% → 93% | 4.62d → 4.55d |  |  |
| 28 | Dimension Vendedor |  | 2009-01-10 21:24 A |  | 80% → 100% | 6.95d → none |  | was named Dimension Jefe Supervisor Vendedor |
| 33 | Tabla de Hechos: Rechazos de Pedidos | 2009-01-17 20:00 → 2009-01-17 21:00 | 2009-01-17 22:00 → 2009-01-17 23:00 |  |  | 4.68d → 4.55d |  |  |
| 47 | Elaboracion de Manual sin adicion de rechazo |  |  |  |  |  |  | was named Elaboracion de Manual y Presentacion a los usuarios |
| 50 | Presentacion y entrega de las capacidades de la nueva herramienta con correcciones y con cubo de pedido con la adicion de rechazos |  |  |  |  |  | 48 → 49, 48 |  |
